# CIS_IAOO

Schedule from MS Project, 2006-08-01 to 2006-09-07, A marks actual dates.
Iris Enterprise Software

## Calendars

- Standard: Mon-Fri 08:00-12:00, 13:00-17:00; Sat-Sun off.

## Resources

| Resource |
| --- |
| vini |
| chris |
| chris and vini |
| Mark/Paul |
| chris ? |
| chris ? and vini |

## Schedule

| ID | WBS | Task | Duration | Start | Finish | Predecessors | Complete | Remaining | Total slack | Free slack | Resources | Work | Actual work |
| --- | --- | --- | --- | --- | --- | --- | --- | --- | --- | --- | --- | --- | --- |
| 1 | 1 | **CIS** | 20.7d | 2006-08-01 A | 2006-08-29 |  | 17% | 17.13d | 4.2d | 0d |  | 165.6h | 28.56h |
| 2 | 1.1 | **DSR** | 17.2d | 2006-08-01 A | 2006-08-24 |  | 16% | 14.38d | 4.7d | 0d |  | 137.6h | 22.56h |
| 3 | 1.1.1 | Configuration | 0.2d | 2006-08-01 A | 2006-08-01 |  | 50% | 0.1d | 7.42d | 0d | vini | 1.6h | 0.8h |
| 4 | 1.1.2 | Incoming Plug-in | 3d | 2006-08-01 | 2006-08-04 | 3 |  |  | 1.25d | 0d | vini | 24h |  |
| 5 | 1.1.3 | Process CIS Responses | 1.5d | 2006-08-04 | 2006-08-07 | 4 |  |  | 1.25d | 0d | vini | 12h |  |
| 6 | 1.1.4 | Database Updates | 0.2d | 2006-08-07 A | 2006-08-07 | 5 | 60% | 0.08d | 7.3d | 0d | vini | 1.6h | 0.96h |
| 7 | 1.1.5 | Outgoing Plug-in | 4d | 2006-08-07 A | 2006-08-11 | 6 | 65% | 1.4d | 4.7d | 0d | vini | 32h | 20.8h |
| 8 | 1.1.6 | **Import Plug-in** | 3d | 2006-08-11 | 2006-08-16 | 7 |  |  | 4.7d | 0d |  | 24h |  |
| 9 | 1.1.6.1 | Process Monthly Return | 3d | 2006-08-11 | 2006-08-16 |  |  |  | 1.25d | 0d | chris ? | 24h |  |
| 10 | 1.1.7 | **Export Plug-in** | 3.3d | 2006-08-16 | 2006-08-22 | 8, 9 |  |  | 4.7d | 0d |  | 26.4h |  |
| 11 | 1.1.7.1 | Monthly Sub-contractor Payment & Deduction Statement | 3d | 2006-08-16 | 2006-08-21 |  |  |  | 1.25d | 0d | chris ? | 24h |  |
| 12 | 1.1.7.2 | Obtain verification number ? | 0.3d | 2006-08-21 | 2006-08-22 | 11 |  |  | 4.7d |  | chris ? | 2.4h |  |
| 13 | 1.1.8 | Development Test | 2d | 2006-08-22 | 2006-08-24 | 11, 10 |  |  | 1.25d |  | chris ? and vini | 16h |  |
| 14 | 1.2 | **Dashboard** | 3.5d | 2006-08-24 A | 2006-08-29 | 2 | 21% | 2.75d | 4.2d |  |  | 28h | 6h |
| 15 | 1.2.1 | Configuration | 0.5d | 2006-08-24 A | 2006-08-24 |  | 50% | 0.25d | 4.45d | 0d | vini | 4h | 2h |
| 16 | 1.2.2 | New Frame (see note) | 0.5d | 2006-08-24 | 2006-08-25 | 15 |  |  | 4.45d | 0d | vini | 4h |  |
| 17 | 1.2.3 | Test | 1.5d | 2006-08-25 | 2006-08-28 | 16 |  |  | 4.45d | 0d | vini | 12h |  |
| 18 | 1.2.4 | **Dashboard Front End for CIS Return** | 1d | 2006-08-28 A | 2006-08-29 | 17 | 50% | 0.5d | 4.2d |  |  | 8h | 4h |
| 19 | 1.2.4.1 | Read from DSR DB/File System | 0.5d | 2006-08-28 A | 2006-08-29 |  | 50% | 0.25d | 1d | 0d | vini | 4h | 2h |
| 20 | 1.2.4.2 | Show XML File result | 0.5d | 2006-08-29 A | 2006-08-29 | 19 | 50% | 0.25d | 4.2d |  | vini | 4h | 2h |
| 21 | 2 | **IAOO** | 6.5d | 2006-08-29 A | 2006-09-07 | 1 | 65% | 2.3d | 0d |  |  | 48h | 33.6h |
| 22 | 2.1 | **DSR** | 1.5d | 2006-08-29 A | 2006-08-31 |  | 67% | 0.5d | 1.2d | 0d |  | 8h | 8h |
| 23 | 2.1.1 | Load Exchequer companies by installation | 1d | 2006-08-29 A | 2006-08-30 A |  | 100% |  |  |  | vini | 8h | 8h |
| 24 | 2.1.2 | Company validation through send/receive | 0.5d | 2006-08-30 | 2006-08-31 | 23 |  |  | 1.2d |  |  |  |  |

Notes:
- 16: If more details are involved, it might take a little bit longer
- 18: If necessary

| ID | WBS | Task | Duration | Start | Finish | Predecessors | Complete | Remaining | Total slack | Free slack | Resources | Work | Actual work |
| --- | --- | --- | --- | --- | --- | --- | --- | --- | --- | --- | --- | --- | --- |
| 25 | 2.2 | **Dashboard** | 5d | 2006-08-31 A | 2006-09-07 | 22 | 64% | 1.8d | 0d |  |  | 40h | 25.6h |
| 26 | 2.2.1 | Change refreshing time | 0.3d | 2006-08-31 | 2006-08-31 |  |  |  | 1.2d | 0d | vini | 2.4h |  |
| 27 | 2.2.2 | Apply filter for specific company in use | 2d | 2006-08-31 A | 2006-09-04 A | 26 | 100% |  |  |  | vini | 16h | 16h |
| 28 | 2.2.3 | New COM TK backdoor (if necessary) | 1.5d | 2006-09-04 | 2006-09-05 | 27 |  |  | 1.2d |  | Mark/Paul | 12h |  |
| 29 | 2.2.4 | Identify VAO system | 0.2d | 2006-09-06 A | 2006-09-06 A | 28 | 100% |  |  |  | vini | 1.6h | 1.6h |
| 30 | 2.2.5 | Configuration for VAO | 1d | 2006-09-06 A | 2006-09-07 A | 29 | 100% |  |  |  | vini | 8h | 8h |
